# COMMERCIAL CONSTRUCTION

Schedule from MS Project, 2024-10-22 to 2025-03-17, costs in $, A marks actual dates.

## Calendars

- Standard: Mon-Fri 08:00-12:00, 13:00-17:00; Sat-Sun off.

## Resources

| Resource | Rate |
| --- | --- |
| G.C. Project Management | 150 |
| G.C. Superintendent | 120 |
| G.C. Survey Crew | 100 |
| G.C. Labor Crew | 100 |
| G.C. Concrete Crew | 90 |
| Site Grading Contractor | 80 |
| Plumbing Contractor | 60 |
| Electric Contractor | 88 |
| HVAC Contractor | 96 |
| Steel Erection Contractor | 75 |
| Drywall Contractor | 70 |
| Roofing Contractor | 60 |
| Window Contractor | 82 |
| Painting Contractor | 40 |
| Paving Contractor | 45 |

## Schedule

| ID | WBS | Task | Type | Duration | Start | Finish | Predecessors | Complete | Resources | Work | Actual work | Cost | Actual cost |
| --- | --- | --- | --- | --- | --- | --- | --- | --- | --- | --- | --- | --- | --- |
| 1 | 1 | **Pre-Construction Phase** |  | 17d | 2024-10-22 A | 2024-11-13 A |  | 100% |  | 152h | 152h | 22,000 | 22,000 |
| 2 | 1.1 | Land acquisition and site survey |  | 2d | 2024-10-22 A | 2024-10-23 A |  | 100% | G.C. Project Management; G.C. Survey Crew | 32h | 32h | 4,000 | 4,000 |
| 3 | 1.2 | Architectural design and approval |  | 5d | 2024-10-24 A | 2024-10-30 A | 2 | 100% | G.C. Project Management | 40h | 40h | 6,000 | 6,000 |
| 4 | 1.3 | Engineering design (structural, electrical, plumbing) |  | 6d | 2024-10-31 A | 2024-11-07 A | 3 | 100% | G.C. Project Management | 48h | 48h | 7,200 | 7,200 |
| 5 | 1.4 | Permit and zoning approvals |  | 4d | 2024-11-08 A | 2024-11-13 A | 4 | 100% | G.C. Project Management | 32h | 32h | 4,800 | 4,800 |
| 6 | 1.5 | Pre-Construction Phase Completed | milestone | 0d | 2024-11-13 A | 2024-11-13 A | 5 | 100% |  |  |  |  |  |
| 7 | 2 | **Site Preparation** |  | 15d | 2024-11-14 A | 2024-12-04 A | 1 | 100% |  | 240h | 240h | 21,056 | 21,056 |
| 8 | 2.1 | Site clearing and grading |  | 5d | 2024-11-14 A | 2024-11-20 A |  | 100% | G.C. Labor Crew; Site Grading Contractor | 80h | 80h | 7,200 | 7,200 |
| 9 | 2.2 | Excavation and foundation work |  | 6d | 2024-11-21 A | 2024-11-28 A | 8 | 100% | G.C. Concrete Crew; G.C. Labor Crew | 96h | 96h | 9,120 | 9,120 |
| 10 | 2.3 | Utility connection setup (water, electricity, etc.) |  | 4d | 2024-11-29 A | 2024-12-04 A | 9 | 100% | Electric Contractor; Plumbing Contractor | 64h | 64h | 4,736 | 4,736 |
| 11 | 2.4 | Site Preperation Completed | milestone | 0d | 2024-12-04 A | 2024-12-04 A | 10 | 100% |  |  |  |  |  |
| 12 | 3 | **Construction Phase** |  | 43d | 2024-12-05 A | 2025-02-03 A | 7 | 100% |  | 408h | 408h | 32,896 | 32,896 |
| 13 | 3.1 | Structure framing (steel or concrete) |  | 8d | 2024-12-05 A | 2024-12-16 A |  | 100% | G.C. Labor Crew; Steel Erection Contractor | 128h | 128h | 11,200 | 11,200 |
| 14 | 3.2 | Installation of electrical systems |  | 10d | 2024-12-17 A | 2024-12-30 A | 13 | 100% | Electric Contractor | 80h | 80h | 7,040 | 7,040 |
| 15 | 3.3 | Installation of plumbing systems |  | 7d | 2024-12-31 A | 2025-01-08 A | 14 | 100% | Plumbing Contractor | 56h | 56h | 3,360 | 3,360 |
| 16 | 3.4 | HVAC installation |  | 6d | 2025-01-09 A | 2025-01-16 A | 15 | 100% | HVAC Contractor | 48h | 48h | 4,608 | 4,608 |
| 17 | 3.5 | Roofing |  | 4d | 2025-01-17 A | 2025-01-22 A | 16 | 100% | Roofing Contractor | 32h | 32h | 1,920 | 1,920 |
| 18 | 3.6 | Window and door installation |  | 3d | 2025-01-23 A | 2025-01-27 A | 17 | 100% | Window Contractor | 24h | 24h | 1,968 | 1,968 |
| 19 | 3.7 | Drywall and insulation |  | 5d | 2025-01-28 A | 2025-02-03 A | 18 | 100% | Drywall Contractor | 40h | 40h | 2,800 | 2,800 |
| 20 | 3.8 | Construction Phase Completed | milestone | 0d | 2025-02-03 A | 2025-02-03 A | 19 | 100% |  |  |  |  |  |
| 21 | 4 | **Interior Work** |  | 13d | 2025-02-04 A | 2025-02-20 A | 12 | 100% |  | 136h | 136h | 10,304 | 10,304 |
| 22 | 4.1 | Flooring installation |  | 4d | 2025-02-04 A | 2025-02-07 A |  | 100% | G.C. Labor Crew; Paving Contractor | 64h | 64h | 4,640 | 4,640 |
| 23 | 4.2 | Painting and wall finishing |  | 3d | 2025-02-10 A | 2025-02-12 A | 22 | 100% | Painting Contractor | 24h | 24h | 960 | 960 |
| 24 | 4.3 | Electrical and plumbing fixtures installation |  | 1d | 2025-02-13 A | 2025-02-13 A | 23 | 100% | Electric Contractor; Plumbing Contractor | 8h | 8h | 704 | 704 |
| 25 | 4.4 | Carpentry and cabinetry work |  | 5d | 2025-02-14 A | 2025-02-20 A | 24 | 100% | G.C. Labor Crew | 40h | 40h | 4,000 | 4,000 |
| 26 | 4.5 | Interior Work Completed | milestone | 0d | 2025-02-20 A | 2025-02-20 A | 25 | 100% |  |  |  |  |  |

| ID | WBS | Task | Type | Duration | Start | Finish | Predecessors | Complete | Resources | Work | Actual work | Cost | Actual cost |
| --- | --- | --- | --- | --- | --- | --- | --- | --- | --- | --- | --- | --- | --- |
| 27 | 5 | **Exterior Work** |  | 7d | 2025-02-21 A | 2025-03-03 A | 21 | 100% |  | 72h | 72h | 5,080 | 5,080 |
| 28 | 5.1 | Landscaping |  | 2d | 2025-02-21 A | 2025-02-24 A |  | 100% | G.C. Concrete Crew | 16h | 16h | 1,440 | 1,440 |
| 29 | 5.2 | Exterior siding or cladding |  | 2d | 2025-02-25 A | 2025-02-26 A | 28 | 100% | G.C. Labor Crew; Roofing Contractor | 32h | 32h | 2,560 | 2,560 |
| 30 | 5.3 | Parking lot and driveway paving |  | 3d | 2025-02-27 A | 2025-03-03 A | 29 | 100% | Paving Contractor | 24h | 24h | 1,080 | 1,080 |
| 31 | 5.4 | Exterior Work Completed | milestone | 0d | 2025-03-03 A | 2025-03-03 A | 30 | 100% |  |  |  |  |  |
| 32 | 6 | **Post-Construction** |  | 10d | 2025-03-04 A | 2025-03-17 A | 27 | 100% |  | 96h | 96h | 11,120 | 11,120 |
| 33 | 6.1 | Final inspection and approvals |  | 2d | 2025-03-04 A | 2025-03-05 A |  | 100% | G.C. Project Management; G.C. Superintendent | 32h | 32h | 4,320 | 4,320 |
| 34 | 6.2 | Punch list completion |  | 3d | 2025-03-06 A | 2025-03-10 A | 33 | 100% | G.C. Labor Crew | 24h | 24h | 2,400 | 2,400 |
| 35 | 6.3 | Cleanup and site demobilization |  | 4d | 2025-03-11 A | 2025-03-14 A | 34 | 100% | G.C. Labor Crew | 32h | 32h | 3,200 | 3,200 |
| 36 | 6.4 | Handover to client |  | 1d | 2025-03-17 A | 2025-03-17 A | 35 | 100% | G.C. Project Management | 8h | 8h | 1,200 | 1,200 |
| 37 | 6.5 | Post Construction Completed | milestone | 0d | 2025-03-17 A | 2025-03-17 A | 36 | 100% |  |  |  |  |  |
